# period2

Schedule from MS Project, 2024-07-03 to 2025-06-30, status date 2024-10-31, costs in $, A marks actual dates.
Sabian Technologies

## Calendars

- Standard: Mon-Fri 08:00-12:00, 13:00-17:00; Sat-Sun off.

## Resources

| Resource | Rate |
| --- | --- |
| Guy Radomski | 47 |
| Melodee Beene | 89 |
| Tari Watrous | 139 |
| Javier Ruddock | 50 |
| Period 1 Training Costs |  |
| Period 1 Managerial Action Costs |  |
| Period 1 Unallocated Resource Costs |  |
| Jessie Garoner | 72 |
| Period 2 Training Costs |  |
| Period 2 Managerial Action Costs |  |
| Period 2 Unallocated Resource Costs |  |

## Schedule

| ID | WBS | Task | Duration | Start | Finish | Predecessors | Complete | Remaining | Baseline start | Baseline finish | Baseline duration | Total slack | Free slack | Resources | Work | Actual work | Cost | Baseline cost | Actual cost |
| --- | --- | --- | --- | --- | --- | --- | --- | --- | --- | --- | --- | --- | --- | --- | --- | --- | --- | --- | --- |
| 1 | 1 | **Market Assessment** | 53.56d? | 2024-07-03 A | 2024-09-16 |  | 98% | 0.98d? | 2024-07-03 | 2024-09-12 | 51d? | 204.5d |  |  | 500h | 500h | 31,528 | 27,280 | 31,528 |
| 3 | 1.1 | Evaluate market | 13.12d | 2024-07-03 A | 2024-07-22 A |  | 100% |  | 2024-07-03 | 2024-07-19 | 12d? |  |  | Melodee Beene | 105h | 105h | 9,345 | 4,800 | 9,345 |
| 4 | 1.2 | Develop Business opportunity | 8.94d | 2024-07-22 A | 2024-08-02 A | 3 | 100% |  | 2024-07-19 | 2024-08-08 | 14d? |  |  | Melodee Beene; Guy Radomski | 143h | 143h | 9,724 | 10,080 | 9,724 |
| 5 | 1.3 | Customer preference study | 25.62d | 2024-08-02 A | 2024-09-06 A | 4 | 100% |  | 2024-08-08 | 2024-09-06 | 21d? |  |  | Javier Ruddock | 205h | 205h | 10,250 | 8,400 | 10,250 |
| 6 | 1.4 | Business evaluation (NPV, etc.) | 5.88d | 2024-09-06 A | 2024-09-16 A | 5 | 100% |  | 2024-09-06 | 2024-09-12 | 4d? |  |  | Guy Radomski | 47h | 47h | 2,209 | 4,000 | 2,209 |
| 7 | 2 | **Procurement** | 80d? | 2025-01-28 | 2025-05-20 |  |  |  | 2025-01-17 | 2025-05-09 | 80d? | 3.5d |  |  |  |  |  | 12,200 |  |
| 8 | 2.1 | Identify vendors | 7d? | 2025-01-28 | 2025-02-06 | 27, 74 |  |  | 2025-01-17 | 2025-01-28 | 7d? | 11d |  |  |  |  |  | 2,800 |  |
| 9 | 2.2 | Develop and Issue RFQ | 6d? | 2025-01-28 | 2025-02-05 | 74, 27 |  |  | 2025-01-17 | 2025-01-27 | 6d? | 12d |  |  |  |  |  | 2,400 |  |
| 10 | 2.3 | Issue sample (production equivalent) | 5d? | 2025-02-21 | 2025-02-28 | 27, 8, 9, 75 |  |  | 2025-02-12 | 2025-02-19 | 5d? | 0d |  |  |  |  |  | 3,000 |  |
| 11 | 2.4 | Assess RFQ responses and select vendors | 10d? | 2025-05-06 | 2025-05-20 | 79, 15 |  |  | 2025-04-25 | 2025-05-09 | 10d? | 3.5d |  |  |  |  |  | 4,000 |  |
| 12 | 3 | **Supplier Quality** | 47d? | 2025-02-28 | 2025-05-06 |  |  |  | 2025-02-19 | 2025-04-25 | 47d? | 0d |  |  |  |  |  | 14,400 |  |
| 13 | 3.1 | Perform supplier process capability | 14d? | 2025-02-28 | 2025-03-20 | 10 |  |  | 2025-02-19 | 2025-03-11 | 14d? | 0d |  |  |  |  |  | 5,600 |  |
| 14 | 3.2 | Approve sample parts | 8d? | 2025-03-20 | 2025-04-01 | 13, 76 |  |  | 2025-03-11 | 2025-03-21 | 8d? | 7d |  |  |  |  |  | 4,800 |  |
| 15 | 3.3 | Qualify Supplier | 10d? | 2025-04-22 | 2025-05-06 | 78, 14 |  |  | 2025-04-11 | 2025-04-25 | 10d? | 0d |  |  |  |  |  | 4,000 |  |
| 16 | 4 | **Design** | 70d? | 2024-09-16 A | 2024-12-23 |  | 53% | 32.74d? | 2024-09-12 | 2024-12-12 | 65d? | 0d |  |  | 264h | 264h | 19,008 | 28,800 | 19,008 |
| 17 | 4.1 | Design and development plan | 6.88d | 2024-09-16 A | 2024-09-25 A | 6, 70 | 100% |  | 2024-09-12 | 2024-09-20 | 6d? |  |  | Jessie Garoner | 55h | 55h | 3,960 | 2,400 | 3,960 |
| 18 | 4.2 | Design specs. | 26.12d | 2024-09-25 A | 2024-10-31 A | 17 | 100% |  | 2024-09-20 | 2024-10-22 | 22d? |  |  | Jessie Garoner | 209h | 209h | 15,048 | 8,800 | 15,048 |
| 19 | 4.3 | Identify testing requirements | 10d? | 2024-10-31 | 2024-11-14 | 18, 71, 51 |  |  | 2024-10-22 | 2024-11-05 | 10d? | 8d | 0d |  |  |  |  | 4,000 |  |
| 20 | 4.4 | Risk analysis | 10d? | 2024-11-14 | 2024-11-28 | 19 |  |  | 2024-11-05 | 2024-11-19 | 10d? | 8d |  |  |  |  |  | 10,000 |  |
| 21 | 4.5 | Design labeling | 5d? | 2024-12-10 | 2024-12-17 | 20, 72 |  |  | 2024-11-29 | 2024-12-06 | 5d? | 0d |  |  |  |  |  | 2,000 |  |
| 22 | 4.6 | Approve design | 4d? | 2024-12-17 | 2024-12-23 | 21 |  |  | 2024-12-06 | 2024-12-12 | 4d? | 0d |  |  |  |  |  | 1,600 |  |
| 23 | 5 | **Engineering** | 93d? | 2024-12-23 | 2025-05-01 |  |  |  | 2024-12-12 | 2025-04-22 | 93d? | 0d |  |  |  |  |  | 35,200 |  |
| 24 | 5.1 | Initial engineering specs. | 5d? | 2024-12-23 | 2024-12-30 | 22 |  |  | 2024-12-12 | 2024-12-19 | 5d? | 0d |  |  |  |  |  | 2,000 |  |
| 25 | 5.2 | Design verification activities | 7d? | 2024-12-30 | 2025-01-08 | 24, 73 |  |  | 2024-12-19 | 2024-12-30 | 7d? | 0d |  |  |  |  |  | 4,200 |  |
| 26 | 5.3 | Verification design review | 4d? | 2025-01-08 | 2025-01-14 | 25 |  |  | 2024-12-30 | 2025-01-03 | 4d? | 0d |  |  |  |  |  | 1,600 |  |
| 27 | 5.4 | Release pre-production specifications | 10d? | 2025-01-14 | 2025-01-28 | 26 |  |  | 2025-01-03 | 2025-01-17 | 10d? | 0d |  |  |  |  |  | 4,000 |  |
| 28 | 5.5 | Build functional model | 18d? | 2025-01-28 | 2025-02-21 | 27, 74 |  |  | 2025-01-17 | 2025-02-12 | 18d? | 0d |  |  |  |  |  | 10,800 |  |
| 29 | 5.6 | Design validation activities | 5d? | 2025-03-20 | 2025-03-27 | 76, 28, 13 |  |  | 2025-03-11 | 2025-03-18 | 5d? | 10d |  |  |  |  |  | 2,000 |  |
| 30 | 5.7 | Validation design review | 4d? | 2025-04-10 | 2025-04-16 | 29, 77 |  |  | 2025-04-01 | 2025-04-07 | 4d? | 0d |  |  |  |  |  | 4,000 |  |
| 31 | 5.8 | Approve model design | 4d? | 2025-04-16 | 2025-04-22 | 30 |  |  | 2025-04-07 | 2025-04-11 | 4d? | 0d |  |  |  |  |  | 2,400 |  |
| 32 | 5.9 | Design transfer activities | 7d? | 2025-04-22 | 2025-05-01 | 31, 37, 78 |  |  | 2025-04-11 | 2025-04-22 | 7d? | 0d |  |  |  |  |  | 4,200 |  |

| ID | WBS | Task | Duration | Start | Finish | Predecessors | Complete | Remaining | Baseline start | Baseline finish | Baseline duration | Total slack | Resources | Work | Actual work | Cost | Baseline cost | Actual cost |
| --- | --- | --- | --- | --- | --- | --- | --- | --- | --- | --- | --- | --- | --- | --- | --- | --- | --- | --- |
| 33 | 6 | **Engineering Quality** | 70d? | 2025-01-28 | 2025-05-06 |  |  |  | 2025-01-17 | 2025-04-25 | 70d? | 0d |  |  |  |  | 16,600 |  |
| 34 | 6.1 | Evaluate design specifications | 10d? | 2025-01-28 | 2025-02-11 | 74, 27 |  |  | 2025-01-17 | 2025-01-31 | 10d? | 8d |  |  |  |  | 4,000 |  |
| 35 | 6.2 | Develop testing protocol for prototype | 8d? | 2025-02-21 | 2025-03-05 | 27, 34, 75 |  |  | 2025-02-12 | 2025-02-24 | 8d? | 11d |  |  |  |  | 3,200 |  |
| 36 | 6.3 | Test prototype | 10d? | 2025-03-20 | 2025-04-03 | 76, 35, 28, 13 |  |  | 2025-03-11 | 2025-03-25 | 10d? | 5d |  |  |  |  | 4,000 |  |
| 37 | 6.4 | Evaluate results of tests and identify weaknesses | 6d? | 2025-04-10 | 2025-04-18 | 77, 36 |  |  | 2025-04-01 | 2025-04-09 | 6d? | 2d |  |  |  |  | 2,400 |  |
| 38 | 6.5 | Product release meetings | 3d? | 2025-05-01 | 2025-05-06 | 32, 37, 31 |  |  | 2025-04-22 | 2025-04-25 | 3d? | 0d |  |  |  |  | 3,000 |  |
| 39 | 7 | **Manufacturing** | 68.5d? | 2025-03-20 | 2025-06-25 |  |  |  | 2025-03-11 | 2025-06-13 | 68.5d? | 0d |  |  |  |  | 22,600 |  |
| 40 | 7.1 | Process engineering plan | 15d? | 2025-03-20 | 2025-04-10 | 28, 13, 76 |  |  | 2025-03-11 | 2025-04-01 | 15d? | 0d |  |  |  |  | 6,000 |  |
| 41 | 7.2 | Develop production plan | 6d? | 2025-04-22 | 2025-04-30 | 78, 37, 30, 40 |  |  | 2025-04-11 | 2025-04-21 | 6d? | 4d |  |  |  |  | 2,400 |  |
| 42 | 7.3 | Develop production control plan | 8.5d? | 2025-05-06 | 2025-05-19 | 41, 15, 79 |  |  | 2025-04-25 | 2025-05-07 | 8.5d? | 0d |  |  |  |  | 3,400 |  |
| 43 | 7.4 | Approve production parts | 5d? | 2025-05-19 | 2025-05-26 | 42 |  |  | 2025-05-07 | 2025-05-14 | 5d? | 0d |  |  |  |  | 2,000 |  |
| 44 | 7.5 | Contracting for deliveries | 8d? | 2025-05-26 | 2025-06-05 | 43, 11 |  |  | 2025-05-14 | 2025-05-26 | 8d? | 0d |  |  |  |  | 3,200 |  |
| 45 | 7.6 | Submit production purchase order | 2d? | 2025-06-05 | 2025-06-09 | 44, 80 |  |  | 2025-05-26 | 2025-05-28 | 2d? | 0d |  |  |  |  | 800 |  |
| 46 | 7.7 | Production pilot test | 5d? | 2025-06-09 | 2025-06-16 | 45, 38 |  |  | 2025-05-28 | 2025-06-04 | 5d? | 0d |  |  |  |  | 2,000 |  |
| 47 | 7.8 | Debugging production system | 4d? | 2025-06-16 | 2025-06-20 | 46 |  |  | 2025-06-04 | 2025-06-10 | 4d? | 0d |  |  |  |  | 1,600 |  |
| 48 | 7.9 | Production release | 3d? | 2025-06-20 | 2025-06-25 | 47 |  |  | 2025-06-10 | 2025-06-13 | 3d? | 0d |  |  |  |  | 1,200 |  |
| 49 | 8 | **Commercialization** | 204.5d? | 2024-09-16 A | 2025-06-30 |  | 17% | 169.5d? | 2024-09-12 | 2025-06-18 | 199.5d? | 0d |  | 185h | 185h | 12,857.5 | 39,560 | 12,857.5 |
| 50 | 8.1 | Develop preliminary marketing plan | 2.88d | 2024-09-16 A | 2024-09-19 A | 6, 70 | 100% |  | 2024-09-12 | 2024-09-19 | 5d? |  | Melodee Beene; Javier Ruddock | 46h | 46h | 3,197 | 3,600 | 3,197 |
| 51 | 8.2 | Develop marketing program | 8.69d | 2024-09-19 A | 2024-10-02 A | 50 | 100% |  | 2024-09-19 | 2024-10-10 | 15d? |  | Melodee Beene; Javier Ruddock | 139h | 139h | 9,660.5 | 10,800 | 9,660.5 |
| 52 | 8.3 | Train sales team | 22d? | 2024-10-31 | 2024-12-02 | 51, 71 |  |  | 2024-10-22 | 2024-11-21 | 22d? | 6d |  |  |  |  | 8,800 |  |
| 53 | 8.4 | Advertising campaign | 28d? | 2024-10-31 | 2024-12-10 | 71, 51 |  |  | 2024-10-22 | 2024-11-29 | 28d? | 0d |  |  |  |  | 11,200 |  |
| 54 | 8.5 | Show functional model at trade show | 3d? | 2025-03-20 | 2025-03-25 | 51, 76, 13, 28 |  |  | 2025-03-11 | 2025-03-14 | 3d? | 12d |  |  |  |  | 2,160 |  |
| 55 | 8.6 | Product launch | 3d? | 2025-06-25 | 2025-06-30 | 48, 52, 53, 54 |  |  | 2025-06-13 | 2025-06-18 | 3d? | 0d |  |  |  |  | 3,000 |  |
| 56 | 9 | **Project Management** | 251.06d? | 2024-07-03 A | 2025-06-19 |  | 30% | 176.31d? | 2024-07-03 | 2025-06-09 | 243.5d? | 7d |  | 329h | 329h | 45,731 | 136,000 | 45,731 |
| 57 | 9.1 | Project Management Period 1 | 26.38d | 2024-07-03 A | 2024-08-08 A |  | 100% |  | 2024-07-03 | 2024-08-07 | 25d? |  | Tari Watrous | 211h | 211h | 29,329 | 25,000 | 29,329 |
| 58 | 9.2 | Project Management Period 2 | 14.75d | 2024-09-16 A | 2024-10-07 A | 57, 70 | 100% |  | 2024-09-12 | 2024-10-02 | 14d? |  | Tari Watrous | 118h | 118h | 16,402 | 14,000 | 16,402 |
| 59 | 9.3 | Project Management Period 3 | 14d? | 2024-10-31 | 2024-11-20 | 71, 58 |  |  | 2024-10-22 | 2024-11-11 | 14d? | 14d |  |  |  |  | 14,000 |  |
| 60 | 9.4 | Project Management Period 4 | 13d? | 2024-12-10 | 2024-12-27 | 59, 72 |  |  | 2024-11-29 | 2024-12-18 | 13d? | 1d |  |  |  |  | 13,000 |  |
| 61 | 9.5 | Project Management Period 5 | 15d? | 2024-12-30 | 2025-01-20 | 73, 60 |  |  | 2024-12-19 | 2025-01-09 | 15d? | 6d |  |  |  |  | 15,000 |  |
| 62 | 9.6 | Project Management Period 6 | 9d? | 2025-01-28 | 2025-02-10 | 61, 74 |  |  | 2025-01-17 | 2025-01-30 | 9d? | 9d |  |  |  |  | 9,000 |  |
| 63 | 9.7 | Project Management Period 7 | 11d? | 2025-02-21 | 2025-03-10 | 75, 62 |  |  | 2025-02-12 | 2025-02-27 | 11d? | 8d |  |  |  |  | 11,000 |  |
| 64 | 9.8 | Project Management Period 8 | 3d? | 2025-03-20 | 2025-03-25 | 63, 76 |  |  | 2025-03-11 | 2025-03-14 | 3d? | 12d |  |  |  |  | 3,000 |  |
| 65 | 9.9 | Project Management Period 9 | 4d? | 2025-04-10 | 2025-04-16 | 77, 64 |  |  | 2025-04-01 | 2025-04-07 | 4d? | 4d |  |  |  |  | 4,000 |  |
| 66 | 9.10 | Project Management Period 10 | 5d? | 2025-04-22 | 2025-04-29 | 65, 78 |  |  | 2025-04-11 | 2025-04-18 | 5d? | 5d |  |  |  |  | 5,000 |  |
| 67 | 9.11 | Project Management Period 11 | 13d? | 2025-05-06 | 2025-05-23 | 79, 66 |  |  | 2025-04-25 | 2025-05-14 | 13d? | 8.5d |  |  |  |  | 13,000 |  |
| 68 | 9.12 | Project Management Period 12 | 10d? | 2025-06-05 | 2025-06-19 | 67, 80 |  |  | 2025-05-26 | 2025-06-09 | 10d? | 7d |  |  |  |  | 10,000 |  |

| ID | WBS | Task | Type | Duration | Start | Finish | Predecessors | Complete | Remaining | Baseline start | Baseline finish | Baseline duration | Total slack | Resources | Baseline cost |
| --- | --- | --- | --- | --- | --- | --- | --- | --- | --- | --- | --- | --- | --- | --- | --- |
| 69 | 10 | **Milestones** |  | 204.5d? | 2024-09-16 A | 2025-06-30 |  |  | 204.5d? | 2024-09-12 | 2025-06-18 | 199.5d? | 0d |  | 25,000 |
| 70 | 10.1 | Milestone 1 | milestone | 0d | 2024-09-16 A | 2024-09-16 A | 57, 6 | 100% |  | 2024-09-12 | 2024-09-12 | 0d? |  | Period 1 Training Costs; Period 1 Managerial Action Costs; Period 1 Unallocated Resource Costs | 3,125 |
| 71 | 10.2 | Milestone 2 | milestone | 0d | 2024-10-31 A | 2024-10-31 A | 18, 51, 58 | 100% |  | 2024-10-22 | 2024-10-22 | 0d? |  | Period 2 Training Costs; Period 2 Managerial Action Costs; Period 2 Unallocated Resource Costs | 3,125 |
| 72 | 10.3 | Milestone 3 | milestone | 0d? | 2024-12-10 | 2024-12-10 | 59, 53, 52, 20 |  |  | 2024-11-29 | 2024-11-29 | 0d? | 0d |  | 3,125 |
| 73 | 10.4 | Milestone 4 | milestone | 0d? | 2024-12-30 | 2024-12-30 | 24, 60 |  |  | 2024-12-19 | 2024-12-19 | 0d? | 0d |  | 3,125 |
| 74 | 10.5 | Milestone 5 | milestone | 0d? | 2025-01-28 | 2025-01-28 | 61, 27 |  |  | 2025-01-17 | 2025-01-17 | 0d? | 0d |  | 3,125 |
| 75 | 10.6 | Milestone 6 | milestone | 0d? | 2025-02-21 | 2025-02-21 | 28, 34, 9, 8, 62 |  |  | 2025-02-12 | 2025-02-12 | 0d? | 0d |  | 3,125 |
| 76 | 10.7 | Milestone 7 | milestone | 0d? | 2025-03-20 | 2025-03-20 | 63, 13, 35 |  |  | 2025-03-11 | 2025-03-11 | 0d? | 0d |  | 3,125 |
| 77 | 10.8 | Milestone 8 | milestone | 0d? | 2025-04-10 | 2025-04-10 | 29, 40, 14, 64, 54, 36 |  |  | 2025-04-01 | 2025-04-01 | 0d? | 0d |  | 3,125 |
| 78 | 10.9 | Milestone 9 | milestone | 0d? | 2025-04-22 | 2025-04-22 | 65, 37, 31 |  |  | 2025-04-11 | 2025-04-11 | 0d? | 0d |  |  |
| 79 | 10.10 | Milestone 10 | milestone | 0d? | 2025-05-06 | 2025-05-06 | 41, 38, 15, 66 |  |  | 2025-04-25 | 2025-04-25 | 0d? | 0d |  |  |
| 80 | 10.11 | Milestone 11 | milestone | 0d? | 2025-06-05 | 2025-06-05 | 67, 44 |  |  | 2025-05-26 | 2025-05-26 | 0d? | 0d |  |  |
| 81 | 10.12 | Milestone 12 | milestone | 0d? | 2025-06-30 | 2025-06-30 | 68, 55 |  |  | 2025-06-18 | 2025-06-18 | 0d? | 0d |  |  |
