# 37509_13309_724202494456AM857223-v2013

Schedule from MS Project, 2024-07-03 to 2025-06-24, status date 2025-01-22, costs in $, A marks actual dates.
Sabian Technologies

## Calendars

- Standard: Mon-Fri 08:00-12:00, 13:00-17:00; Sat-Sun off.

## Resources

| Resource | Rate | Cost per use |
| --- | --- | --- |
| Guy Radomski | 47 |  |
| Melodee Beene | 89 |  |
| Tari Watrous | 139 |  |
| Javier Ruddock | 50 |  |
| Period 1 Training Costs |  |  |
| Period 1 Managerial Action Costs |  |  |
| Period 1 Unallocated Resource Costs |  |  |
| Jessie Garoner | 72 |  |
| Period 2 Training Costs |  |  |
| Period 2 Managerial Action Costs |  |  |
| Period 2 Unallocated Resource Costs |  |  |
| Julie Schmitt | 44 |  |
| Period 3 Training Costs |  |  |
| Period 3 Managerial Action Costs |  |  |
| Period 3 Unallocated Resource Costs |  |  |
| Ted Zollinger | 59 |  |
| Tyrone Sahota | 48 |  |
| Period 4 Training Costs |  | 1752 |
| Period 4 Managerial Action Costs |  |  |
| Period 4 Unallocated Resource Costs |  |  |
| Period 5 Training Costs |  |  |
| Period 5 Managerial Action Costs |  |  |
| Period 5 Unallocated Resource Costs |  |  |

## Schedule

| ID | WBS | Task | Duration | Start | Finish | Predecessors | Complete | Remaining | Baseline start | Baseline finish | Baseline duration | Total slack | Resources | Work | Actual work | Cost | Baseline cost | Actual cost |
| --- | --- | --- | --- | --- | --- | --- | --- | --- | --- | --- | --- | --- | --- | --- | --- | --- | --- | --- |
| 1 | 1 | **Market Assessment** | 53.56d | 2024-07-03 A | 2024-09-16 A |  | 100% |  | 2024-07-03 | 2024-09-12 | 51d? |  |  | 500h | 500h | 31,528 | 27,280 | 31,528 |
| 2 | 1.1 | Evaluate market | 13.12d | 2024-07-03 A | 2024-07-22 A |  | 100% |  | 2024-07-03 | 2024-07-19 | 12d? |  | Melodee Beene | 105h | 105h | 9,345 | 4,800 | 9,345 |
| 3 | 1.2 | Develop Business opportunity | 8.94d | 2024-07-22 A | 2024-08-02 A | 2 | 100% |  | 2024-07-19 | 2024-08-08 | 14d? |  | Melodee Beene; Guy Radomski | 143h | 143h | 9,724 | 10,080 | 9,724 |
| 4 | 1.3 | Customer preference study | 25.62d | 2024-08-02 A | 2024-09-06 A | 3 | 100% |  | 2024-08-08 | 2024-09-06 | 21d? |  | Javier Ruddock | 205h | 205h | 10,250 | 8,400 | 10,250 |
| 5 | 1.4 | Business evaluation (NPV, etc.) | 5.88d | 2024-09-06 A | 2024-09-16 A | 4 | 100% |  | 2024-09-06 | 2024-09-12 | 4d? |  | Guy Radomski | 47h | 47h | 2,209 | 4,000 | 2,209 |
| 6 | 2 | **Procurement** | 80d? | 2025-01-22 | 2025-05-14 |  |  |  | 2025-01-17 | 2025-05-09 | 80d? | 3.5d |  |  |  |  | 12,200 |  |
| 7 | 2.1 | Identify vendors | 7d? | 2025-01-22 | 2025-01-31 | 26, 73 |  |  | 2025-01-17 | 2025-01-28 | 7d? | 11d |  |  |  |  | 2,800 |  |
| 8 | 2.2 | Develop and Issue RFQ | 6d? | 2025-01-22 | 2025-01-30 | 73, 26 |  |  | 2025-01-17 | 2025-01-27 | 6d? | 12d |  |  |  |  | 2,400 |  |
| 9 | 2.3 | Issue sample (production equivalent) | 5d? | 2025-02-17 | 2025-02-24 | 26, 7, 8, 74 |  |  | 2025-02-12 | 2025-02-19 | 5d? | 0d |  |  |  |  | 3,000 |  |
| 10 | 2.4 | Assess RFQ responses and select vendors | 10d? | 2025-04-30 | 2025-05-14 | 78, 14 |  |  | 2025-04-25 | 2025-05-09 | 10d? | 3.5d |  |  |  |  | 4,000 |  |
| 11 | 3 | **Supplier Quality** | 47d? | 2025-02-24 | 2025-04-30 |  |  |  | 2025-02-19 | 2025-04-25 | 47d? | 0d |  |  |  |  | 14,400 |  |
| 12 | 3.1 | Perform supplier process capability | 14d? | 2025-02-24 | 2025-03-14 | 9 |  |  | 2025-02-19 | 2025-03-11 | 14d? | 0d |  |  |  |  | 5,600 |  |
| 13 | 3.2 | Approve sample parts | 8d? | 2025-03-14 | 2025-03-26 | 12, 75 |  |  | 2025-03-11 | 2025-03-21 | 8d? | 7d |  |  |  |  | 4,800 |  |
| 14 | 3.3 | Qualify Supplier | 10d? | 2025-04-16 | 2025-04-30 | 77, 13 |  |  | 2025-04-11 | 2025-04-25 | 10d? | 0d |  |  |  |  | 4,000 |  |
| 15 | 4 | **Design** | 70.38d | 2024-09-16 A | 2024-12-24 A |  | 100% |  | 2024-09-12 | 2024-12-12 | 65d? |  |  | 558h | 558h | 38,980 | 28,800 | 38,980 |
| 16 | 4.1 | Design and development plan | 6.88d | 2024-09-16 A | 2024-09-25 A | 5, 69 | 100% |  | 2024-09-12 | 2024-09-20 | 6d? |  | Jessie Garoner | 55h | 55h | 3,960 | 2,400 | 3,960 |
| 17 | 4.2 | Design specs. | 26.12d | 2024-09-25 A | 2024-10-31 A | 16 | 100% |  | 2024-09-20 | 2024-10-22 | 22d? |  | Jessie Garoner | 209h | 209h | 15,048 | 8,800 | 15,048 |
| 18 | 4.3 | Identify testing requirements | 11.88d | 2024-10-31 A | 2024-11-18 A | 17, 70, 50 | 100% |  | 2024-10-22 | 2024-11-05 | 10d? |  | Jessie Garoner | 95h | 95h | 6,840 | 4,000 | 6,840 |
| 19 | 4.4 | Risk analysis | 13.38d | 2024-11-18 A | 2024-12-05 A | 18 | 100% |  | 2024-11-05 | 2024-11-19 | 10d? |  | Jessie Garoner | 107h | 107h | 7,704 | 10,000 | 7,704 |
| 20 | 4.5 | Design labeling | 6.38d | 2024-12-06 A | 2024-12-16 A | 19, 71 | 100% |  | 2024-11-29 | 2024-12-06 | 5d? |  | Ted Zollinger | 51h | 51h | 3,009 | 2,000 | 3,009 |
| 21 | 4.6 | Approve design | 5.12d | 2024-12-16 A | 2024-12-24 A | 20 | 100% |  | 2024-12-06 | 2024-12-12 | 4d? |  | Ted Zollinger | 41h | 41h | 2,419 | 1,600 | 2,419 |
| 22 | 5 | **Engineering** | 88.62d? | 2024-12-24 A | 2025-04-25 |  | 33% | 59.67d? | 2024-12-12 | 2025-04-22 | 93d? | 0d |  | 249h | 249h | 13,068.5 | 35,200 | 13,068.5 |
| 23 | 5.1 | Initial engineering specs. | 5.75d | 2024-12-24 A | 2024-12-31 A | 21 | 100% |  | 2024-12-12 | 2024-12-19 | 5d? |  | Tyrone Sahota | 46h | 46h | 2,208 | 2,000 | 2,208 |
| 24 | 5.2 | Design verification activities | 4.19d | 2024-12-31 A | 2025-01-06 A | 23, 72 | 100% |  | 2024-12-19 | 2024-12-30 | 7d? |  | Ted Zollinger; Tyrone Sahota | 67h | 67h | 3,584.5 | 4,200 | 3,584.5 |
| 25 | 5.3 | Verification design review | 2.38d | 2025-01-07 A | 2025-01-09 A | 24 | 100% |  | 2024-12-30 | 2025-01-03 | 4d? |  | Ted Zollinger; Tyrone Sahota | 38h | 38h | 2,033 | 1,600 | 2,033 |
| 26 | 5.4 | Release pre-production specifications | 6.12d | 2025-01-09 A | 2025-01-17 A | 25 | 100% |  | 2025-01-03 | 2025-01-17 | 10d? |  | Tyrone Sahota; Ted Zollinger | 98h | 98h | 5,243 | 4,000 | 5,243 |
| 27 | 5.5 | Build functional model | 18d? | 2025-01-22 | 2025-02-17 | 26, 73 |  |  | 2025-01-17 | 2025-02-12 | 18d? | 0d |  |  |  |  | 10,800 |  |
| 28 | 5.6 | Design validation activities | 5d? | 2025-03-14 | 2025-03-21 | 75, 27, 12 |  |  | 2025-03-11 | 2025-03-18 | 5d? | 10d |  |  |  |  | 2,000 |  |
| 29 | 5.7 | Validation design review | 4d? | 2025-04-04 | 2025-04-10 | 28, 76 |  |  | 2025-04-01 | 2025-04-07 | 4d? | 0d |  |  |  |  | 4,000 |  |
| 30 | 5.8 | Approve model design | 4d? | 2025-04-10 | 2025-04-16 | 29 |  |  | 2025-04-07 | 2025-04-11 | 4d? | 0d |  |  |  |  | 2,400 |  |
| 31 | 5.9 | Design transfer activities | 7d? | 2025-04-16 | 2025-04-25 | 30, 36, 77 |  |  | 2025-04-11 | 2025-04-22 | 7d? | 0d |  |  |  |  | 4,200 |  |

| ID | WBS | Task | Duration | Start | Finish | Predecessors | Complete | Remaining | Baseline start | Baseline finish | Baseline duration | Total slack | Resources | Work | Actual work | Cost | Baseline cost | Actual cost |
| --- | --- | --- | --- | --- | --- | --- | --- | --- | --- | --- | --- | --- | --- | --- | --- | --- | --- | --- |
| 32 | 6 | **Engineering Quality** | 70d? | 2025-01-22 | 2025-04-30 |  |  |  | 2025-01-17 | 2025-04-25 | 70d? | 0d |  |  |  |  | 16,600 |  |
| 33 | 6.1 | Evaluate design specifications | 10d? | 2025-01-22 | 2025-02-05 | 73, 26 |  |  | 2025-01-17 | 2025-01-31 | 10d? | 8d |  |  |  |  | 4,000 |  |
| 34 | 6.2 | Develop testing protocol for prototype | 8d? | 2025-02-17 | 2025-02-27 | 26, 33, 74 |  |  | 2025-02-12 | 2025-02-24 | 8d? | 11d |  |  |  |  | 3,200 |  |
| 35 | 6.3 | Test prototype | 10d? | 2025-03-14 | 2025-03-28 | 75, 34, 27, 12 |  |  | 2025-03-11 | 2025-03-25 | 10d? | 5d |  |  |  |  | 4,000 |  |
| 36 | 6.4 | Evaluate results of tests and identify weaknesses | 6d? | 2025-04-04 | 2025-04-14 | 76, 35 |  |  | 2025-04-01 | 2025-04-09 | 6d? | 2d |  |  |  |  | 2,400 |  |
| 37 | 6.5 | Product release meetings | 3d? | 2025-04-25 | 2025-04-30 | 31, 36, 30 |  |  | 2025-04-22 | 2025-04-25 | 3d? | 0d |  |  |  |  | 3,000 |  |
| 38 | 7 | **Manufacturing** | 68.5d? | 2025-03-14 | 2025-06-19 |  |  |  | 2025-03-11 | 2025-06-13 | 68.5d? | 0d |  |  |  |  | 22,600 |  |
| 39 | 7.1 | Process engineering plan | 15d? | 2025-03-14 | 2025-04-04 | 27, 12, 75 |  |  | 2025-03-11 | 2025-04-01 | 15d? | 0d |  |  |  |  | 6,000 |  |
| 40 | 7.2 | Develop production plan | 6d? | 2025-04-16 | 2025-04-24 | 77, 36, 29, 39 |  |  | 2025-04-11 | 2025-04-21 | 6d? | 4d |  |  |  |  | 2,400 |  |
| 41 | 7.3 | Develop production control plan | 8.5d? | 2025-04-30 | 2025-05-13 | 40, 14, 78 |  |  | 2025-04-25 | 2025-05-07 | 8.5d? | 0d |  |  |  |  | 3,400 |  |
| 42 | 7.4 | Approve production parts | 5d? | 2025-05-13 | 2025-05-20 | 41 |  |  | 2025-05-07 | 2025-05-14 | 5d? | 0d |  |  |  |  | 2,000 |  |
| 43 | 7.5 | Contracting for deliveries | 8d? | 2025-05-20 | 2025-05-30 | 42, 10 |  |  | 2025-05-14 | 2025-05-26 | 8d? | 0d |  |  |  |  | 3,200 |  |
| 44 | 7.6 | Submit production purchase order | 2d? | 2025-05-30 | 2025-06-03 | 43, 79 |  |  | 2025-05-26 | 2025-05-28 | 2d? | 0d |  |  |  |  | 800 |  |
| 45 | 7.7 | Production pilot test | 5d? | 2025-06-03 | 2025-06-10 | 44, 37 |  |  | 2025-05-28 | 2025-06-04 | 5d? | 0d |  |  |  |  | 2,000 |  |
| 46 | 7.8 | Debugging production system | 4d? | 2025-06-10 | 2025-06-16 | 45 |  |  | 2025-06-04 | 2025-06-10 | 4d? | 0d |  |  |  |  | 1,600 |  |
| 47 | 7.9 | Production release | 3d? | 2025-06-16 | 2025-06-19 | 46 |  |  | 2025-06-10 | 2025-06-13 | 3d? | 0d |  |  |  |  | 1,200 |  |
| 48 | 8 | **Commercialization** | 200.5d? | 2024-09-16 A | 2025-06-24 |  | 90% | 20.11d? | 2024-09-12 | 2025-06-18 | 199.5d? | 0d |  | 654h | 654h | 40,630.5 | 39,560 | 40,630.5 |
| 49 | 8.1 | Develop preliminary marketing plan | 2.88d | 2024-09-16 A | 2024-09-19 A | 5, 69 | 100% |  | 2024-09-12 | 2024-09-19 | 5d? |  | Melodee Beene; Javier Ruddock | 46h | 46h | 3,197 | 3,600 | 3,197 |
| 50 | 8.2 | Develop marketing program | 8.69d | 2024-09-19 A | 2024-10-02 A | 49 | 100% |  | 2024-09-19 | 2024-10-10 | 15d? |  | Melodee Beene; Javier Ruddock | 139h | 139h | 9,660.5 | 10,800 | 9,660.5 |
| 51 | 8.3 | Train sales team | 25.88d | 2024-10-31 A | 2024-12-06 A | 50, 70 | 100% |  | 2024-10-22 | 2024-11-21 | 22d? |  | Javier Ruddock | 207h | 207h | 10,350 | 8,800 | 10,350 |
| 52 | 8.4 | Advertising campaign | 16.38d | 2024-10-31 A | 2024-11-25 A | 70, 50 | 100% |  | 2024-10-22 | 2024-11-29 | 28d? |  | Julie Schmitt; Melodee Beene | 262h | 262h | 17,423 | 11,200 | 17,423 |
| 53 | 8.5 | Show functional model at trade show | 3d? | 2025-03-14 | 2025-03-19 | 50, 75, 12, 27 |  |  | 2025-03-11 | 2025-03-14 | 3d? | 12d |  |  |  |  | 2,160 |  |
| 54 | 8.6 | Product launch | 3d? | 2025-06-19 | 2025-06-24 | 47, 51, 52, 53 |  |  | 2025-06-13 | 2025-06-18 | 3d? | 0d |  |  |  |  | 3,000 |  |
| 55 | 9 | **Project Management** | 247.06d? | 2024-07-03 A | 2025-06-13 |  | 61% | 96.71d? | 2024-07-03 | 2025-06-09 | 243.5d? | 7d |  | 684h | 684h | 95,076 | 136,000 | 95,076 |
| 56 | 9.1 | Project Management Period 1 | 26.38d | 2024-07-03 A | 2024-08-08 A |  | 100% |  | 2024-07-03 | 2024-08-07 | 25d? |  | Tari Watrous | 211h | 211h | 29,329 | 25,000 | 29,329 |
| 57 | 9.2 | Project Management Period 2 | 14.75d | 2024-09-16 A | 2024-10-07 A | 56, 69 | 100% |  | 2024-09-12 | 2024-10-02 | 14d? |  | Tari Watrous | 118h | 118h | 16,402 | 14,000 | 16,402 |
| 58 | 9.3 | Project Management Period 3 | 14.75d | 2024-10-31 A | 2024-11-21 A | 70, 57 | 100% |  | 2024-10-22 | 2024-11-11 | 14d? |  | Tari Watrous | 118h | 118h | 16,402 | 14,000 | 16,402 |
| 59 | 9.4 | Project Management Period 4 | 13.75d | 2024-12-06 A | 2024-12-26 A | 58, 71 | 100% |  | 2024-11-29 | 2024-12-18 | 13d? |  | Tari Watrous | 110h | 110h | 15,290 | 13,000 | 15,290 |
| 60 | 9.5 | Project Management Period 5 | 15.88d | 2024-12-31 A | 2025-01-22 A | 72, 59 | 100% |  | 2024-12-19 | 2025-01-09 | 15d? |  | Tari Watrous | 127h | 127h | 17,653 | 15,000 | 17,653 |
| 61 | 9.6 | Project Management Period 6 | 9d? | 2025-01-22 | 2025-02-04 | 60, 73 |  |  | 2025-01-17 | 2025-01-30 | 9d? | 9d |  |  |  |  | 9,000 |  |
| 62 | 9.7 | Project Management Period 7 | 11d? | 2025-02-17 | 2025-03-04 | 74, 61 |  |  | 2025-02-12 | 2025-02-27 | 11d? | 8d |  |  |  |  | 11,000 |  |
| 63 | 9.8 | Project Management Period 8 | 3d? | 2025-03-14 | 2025-03-19 | 62, 75 |  |  | 2025-03-11 | 2025-03-14 | 3d? | 12d |  |  |  |  | 3,000 |  |
| 64 | 9.9 | Project Management Period 9 | 4d? | 2025-04-04 | 2025-04-10 | 76, 63 |  |  | 2025-04-01 | 2025-04-07 | 4d? | 4d |  |  |  |  | 4,000 |  |
| 65 | 9.10 | Project Management Period 10 | 5d? | 2025-04-16 | 2025-04-23 | 64, 77 |  |  | 2025-04-11 | 2025-04-18 | 5d? | 5d |  |  |  |  | 5,000 |  |
| 66 | 9.11 | Project Management Period 11 | 13d? | 2025-04-30 | 2025-05-19 | 78, 65 |  |  | 2025-04-25 | 2025-05-14 | 13d? | 8.5d |  |  |  |  | 13,000 |  |
| 67 | 9.12 | Project Management Period 12 | 10d? | 2025-05-30 | 2025-06-13 | 66, 79 |  |  | 2025-05-26 | 2025-06-09 | 10d? | 7d |  |  |  |  | 10,000 |  |

| ID | WBS | Task | Type | Duration | Start | Finish | Predecessors | Complete | Remaining | Baseline start | Baseline finish | Baseline duration | Total slack | Resources | Cost | Baseline cost | Actual cost |
| --- | --- | --- | --- | --- | --- | --- | --- | --- | --- | --- | --- | --- | --- | --- | --- | --- | --- |
| 68 | 10 | **Milestones** |  | 200.5d? | 2024-09-16 A | 2025-06-24 |  |  | 200.5d? | 2024-09-12 | 2025-06-18 | 199.5d? | 0d |  | 1,752 | 25,000 | 1,752 |
| 69 | 10.1 | Milestone 1 | milestone | 0d | 2024-09-16 A | 2024-09-16 A | 56, 5 | 100% |  | 2024-09-12 | 2024-09-12 | 0d? |  | Period 1 Training Costs; Period 1 Managerial Action Costs; Period 1 Unallocated Resource Costs |  | 3,125 |  |
| 70 | 10.2 | Milestone 2 | milestone | 0d | 2024-10-31 A | 2024-10-31 A | 17, 50, 57 | 100% |  | 2024-10-22 | 2024-10-22 | 0d? |  | Period 2 Training Costs; Period 2 Managerial Action Costs; Period 2 Unallocated Resource Costs |  | 3,125 |  |
| 71 | 10.3 | Milestone 3 | milestone | 0d | 2024-12-06 A | 2024-12-06 A | 58, 52, 51, 19 | 100% |  | 2024-11-29 | 2024-11-29 | 0d? |  | Period 3 Training Costs; Period 3 Managerial Action Costs; Period 3 Unallocated Resource Costs |  | 3,125 |  |
| 72 | 10.4 | Milestone 4 | milestone | 0d | 2024-12-31 A | 2024-12-31 A | 23, 59 | 100% |  | 2024-12-19 | 2024-12-19 | 0d? |  | Period 4 Training Costs; Period 4 Managerial Action Costs; Period 4 Unallocated Resource Costs | 1,752 | 3,125 | 1,752 |
| 73 | 10.5 | Milestone 5 | milestone | 0d | 2025-01-22 A | 2025-01-22 A | 60, 26 | 100% |  | 2025-01-17 | 2025-01-17 | 0d? |  | Period 5 Training Costs; Period 5 Managerial Action Costs; Period 5 Unallocated Resource Costs |  | 3,125 |  |
| 74 | 10.6 | Milestone 6 | milestone | 0d? | 2025-02-17 | 2025-02-17 | 27, 33, 8, 7, 61 |  |  | 2025-02-12 | 2025-02-12 | 0d? | 0d |  |  | 3,125 |  |
| 75 | 10.7 | Milestone 7 | milestone | 0d? | 2025-03-14 | 2025-03-14 | 62, 12, 34 |  |  | 2025-03-11 | 2025-03-11 | 0d? | 0d |  |  | 3,125 |  |
| 76 | 10.8 | Milestone 8 | milestone | 0d? | 2025-04-04 | 2025-04-04 | 28, 39, 13, 63, 53, 35 |  |  | 2025-04-01 | 2025-04-01 | 0d? | 0d |  |  | 3,125 |  |
| 77 | 10.9 | Milestone 9 | milestone | 0d? | 2025-04-16 | 2025-04-16 | 64, 36, 30 |  |  | 2025-04-11 | 2025-04-11 | 0d? | 0d |  |  |  |  |
| 78 | 10.10 | Milestone 10 | milestone | 0d? | 2025-04-30 | 2025-04-30 | 40, 37, 14, 65 |  |  | 2025-04-25 | 2025-04-25 | 0d? | 0d |  |  |  |  |
| 79 | 10.11 | Milestone 11 | milestone | 0d? | 2025-05-30 | 2025-05-30 | 66, 43 |  |  | 2025-05-26 | 2025-05-26 | 0d? | 0d |  |  |  |  |
| 80 | 10.12 | Milestone 12 | milestone | 0d? | 2025-06-24 | 2025-06-24 | 67, 54 |  |  | 2025-06-18 | 2025-06-18 | 0d? | 0d |  |  |  |  |
